# Vivienda Julieta Santiago

Schedule from MS Project XML, 2024-08-13 to 2027-12-13, A marks actual dates.

## Calendars

- Calendario Argentino 2024: Mon-Fri 09:00-13:00, 15:00-19:00; Sat-Sun off. Exceptions (off unless hours are given): 2024-10-11 (Feriado con fines turísticos), 2024-11-18 (Día de la Soberanía Nacional (20/11)), 2024-12-25 to 2033-12-25 (Navidad, recurring), 2025-01-01 to 2034-01-01 (Año nuevo 2025, recurring), 2025-02-10 to 2034-02-10 (Carnaval 2025, recurring), 2025-03-24 to 2034-03-24 (Día Nacional de la Memoria por la Verdad y la Justicia, recurring), 2025-03-28 (Viernes Santo), 2025-04-02 to 2034-04-02 (Día del Veterano y de los Caídos en la Guerra de Malvinas, recurring), 2025-05-01 to 2034-05-01 (Día del Trabajador, recurring), 2025-05-25 to 2034-05-25 (Dia de la revolucion de Mayo, recurring), 2025-06-20 to 2034-06-20 (Día de la Bandera, recurring), 2025-07-09 to 2034-07-09 (Día de la Independencia, recurring), 2025-08-18 to 2034-08-18 (Paso a la Inmortalidad del Gral. José de San Martín (17/08), recurring), 2025-10-13 to 2034-10-13 (Día del Respeto a la Diversidad Cultural (12/10), recurring), 2025-11-18 to 2034-11-18 (Día de la Soberanía Nacional (20/11), recurring), 2025-12-08 to 2034-12-08 (Día de la Virgen, recurring).

## Resources

| Resource |
| --- |
| Gabriela Rojo |
| Posventa |
| Proyectos |
| Julian Steib |
| Alexandra Arevalo |

## Schedule

| ID | WBS | Task | Type | Duration | Start | Finish | Predecessors | Complete | Remaining | Baseline start | Baseline finish | Baseline duration | Baseline 1 start | Baseline 1 finish | Total slack | Constraint | Resources | Work | Actual work |
| --- | --- | --- | --- | --- | --- | --- | --- | --- | --- | --- | --- | --- | --- | --- | --- | --- | --- | --- | --- |
| 1 | 1 | **VIVIENDA JULIETA SANTIAGO** |  | 826d? | 2024-08-13 A | 2027-12-13 |  | 36% | 531.13d? | 2024-08-13 | 2028-03-02 | 883d? | 2024-08-13 | 2027-12-09 | 0d |  |  | 52848h | 18798h |
| 2 | 1.1 | **Presupuestación Proyecto y Obra Vivienda** |  | 34d | 2024-08-13 A | 2024-09-28 A |  | 100% |  | 2024-08-13 | 2024-09-28 | 34d | 2024-08-13 | 2024-09-28 |  |  |  |  |  |
| 3 | 1.1.1 | ✔Presupuestacion Proyecto | milestone | 0d | 2024-08-13 A | 2024-08-13 A |  | 100% |  | 2024-08-13 | 2024-08-13 |  | 2024-08-13 | 2024-08-13 |  | start no earlier than 2024-08-13 | Proyectos |  |  |
| 4 | 1.1.2 | ✔Aceptación Cliente | milestone | 0d | 2024-09-28 A | 2024-09-28 A |  | 100% |  | 2024-09-28 | 2024-09-28 |  | 2024-09-28 | 2024-09-28 |  |  | Proyectos |  |  |
| 5 | 1.2 | **Proyecto Vivienda J. Santiago** |  | 35d | 2024-09-30 A | 2024-11-19 A |  | 100% |  | 2024-09-30 | 2024-11-19 | 35d | 2024-09-30 | 2024-11-19 |  |  |  | 288h | 288h |
| 6 | 1.2.1 | ✔Fase 1 Diseño Conceptual |  | 10d | 2024-09-30 A | 2024-10-11 A |  | 100% |  | 2024-09-30 | 2024-10-11 | 10d | 2024-09-30 | 2024-10-11 |  |  | Proyectos | 80h | 80h |
| 7 | 1.2.2 | ✔Validacion Cliente |  | 2d | 2024-10-14 A | 2024-10-15 A | 6 | 100% |  | 2024-10-14 | 2024-10-15 | 2d | 2024-10-14 | 2024-10-15 |  |  | Gabriela Rojo | 16h | 16h |
| 8 | 1.2.3 | ✔Fase 2 Diseño conceptual |  | 10d | 2024-10-16 A | 2024-10-29 A | 7 | 100% |  | 2024-10-16 | 2024-10-29 | 10d | 2024-10-16 | 2024-10-29 |  |  | Proyectos | 80h | 80h |
| 9 | 1.2.4 | ✔Validación Cliente |  | 2d | 2024-10-30 A | 2024-10-31 A | 8 | 100% |  | 2024-10-30 | 2024-10-31 | 2d | 2024-10-30 | 2024-10-31 |  |  | Gabriela Rojo | 16h | 16h |
| 10 | 1.2.5 | ✔Fase 3 - Diseño Final |  | 10d | 2024-11-01 A | 2024-11-14 A | 9 | 100% |  | 2024-11-01 | 2024-11-14 | 10d | 2024-11-01 | 2024-11-14 |  |  | Proyectos | 80h | 80h |
| 11 | 1.2.6 | ✔Validación Cliente |  | 2d | 2024-11-15 A | 2024-11-19 A | 10 | 100% |  | 2024-11-15 | 2024-11-19 | 2d | 2024-11-15 | 2024-11-19 |  |  | Gabriela Rojo | 16h | 16h |
| 12 | 1.2.7 | ✔Plano Apto Gestiones y Licitación | milestone | 0d | 2024-11-01 A | 2024-11-01 A | 10SS | 100% |  | 2024-11-01 | 2024-11-01 |  | 2024-11-01 | 2024-11-01 |  |  | Proyectos |  |  |
| 13 | 1.3 | **Presupuesto y Contratación de obra** |  | 12d | 2024-11-20 A | 2024-12-05 A |  | 100% |  | 2024-11-20 | 2024-12-05 | 12d | 2024-11-20 | 2024-12-05 |  |  |  | 192h | 192h |
| 14 | 1.3.1 | ✔Computo Métrico General |  | 12d | 2024-11-20 A | 2024-12-05 A | 11 | 100% |  | 2024-11-20 | 2024-12-05 | 12d | 2024-11-20 | 2024-12-05 |  |  | Proyectos | 96h | 96h |
| 15 | 1.3.2 | ✔Cotización de Mano de Obra |  | 12d | 2024-11-20 A | 2024-12-05 A | 11 | 100% |  | 2024-11-20 | 2024-12-05 | 12d | 2024-11-20 | 2024-12-05 |  |  | Proyectos | 96h | 96h |
| 16 | 1.3.3 | ✔Cotizacion de Honorarios Empresa | milestone | 0d | 2024-12-05 A | 2024-12-05 A | 14, 15 | 100% |  | 2024-12-05 | 2024-12-05 |  | 2024-12-05 | 2024-12-05 |  |  | Proyectos |  |  |
| 17 | 1.4 | **Armado de Documetación Y Compra materiales** |  | 14d | 2024-12-06 A | 2025-01-06 A |  | 100% |  | 2024-12-06 | 2025-01-06 | 14d | 2024-12-06 | 2025-01-06 |  |  |  | 232h | 232h |
| 18 | 1.4.1 | ✔Armado de documentación Apto para Contrucción |  | 22d | 2024-12-06 A | 2025-01-06 A | 16 | 100% |  | 2024-12-06 | 2025-01-06 | 22d | 2024-12-06 | 2025-01-06 |  |  | Proyectos | 176h | 176h |
| 19 | 1.4.2 | ✔Confeccion de presupuestos para materiales y Acopio |  | 7d | 2024-12-06 A | 2024-12-16 A | 16 | 100% |  | 2024-12-06 | 2024-12-16 | 7d | 2024-12-06 | 2024-12-16 |  |  | Proyectos | 56h | 56h |
| 20 | 1.5 | **Gestion Vivienda J. Santiago** |  | 87d | 2024-11-01 A | 2025-03-17 A | 12 | 100% |  | 2024-11-01 | 2025-03-18 | 88d | 2024-11-01 | 2025-03-17 |  |  |  | 1168h | 1168h |
| 21 | 1.5.1 | ✔Gestiones CAPC |  | 30d | 2024-11-01 A | 2024-12-13 A | 12 | 100% |  | 2024-11-01 | 2024-12-13 | 30d | 2024-11-01 | 2024-12-13 |  |  | Gabriela Rojo | 240h | 240h |
| 22 | 1.5.2 | ✔Gestiones municipales |  | 57d | 2024-12-16 A | 2025-03-17 A | 21 | 100% |  | 2024-12-16 | 2025-03-18 | 58d | 2024-12-16 | 2025-03-17 |  |  | Gabriela Rojo | 456h | 456h |
| 23 | 1.5.3 | ✔Gestiones de personal. |  | 29d | 2025-02-04 A | 2025-03-17 A | 22FF | 100% |  | 2025-02-04 | 2025-03-18 | 30d | 2025-02-04 | 2025-03-17 |  |  | Gabriela Rojo | 232h | 232h |
| 24 | 1.5.4 | ✔Solicitudes de Servicios |  | 30d | 2024-12-16 A | 2025-02-05 A | 21 | 100% |  | 2024-12-16 | 2025-02-05 | 30d | 2024-12-16 | 2025-02-05 |  |  | Gabriela Rojo | 240h | 240h |

| ID | WBS | Task | Type | Duration | Start | Finish | Predecessors | Complete | Remaining | Baseline start | Baseline finish | Baseline duration | Baseline 1 start | Baseline 1 finish | Total slack | Free slack | Constraint | Resources | Work | Actual work |
| --- | --- | --- | --- | --- | --- | --- | --- | --- | --- | --- | --- | --- | --- | --- | --- | --- | --- | --- | --- | --- |
| 25 | 1.6 | **Obra Vivienda J. Santiago** |  | 424d | 2025-03-17 A | 2026-11-30 |  | 10% | 382.88d | 2025-03-18 | 2028-03-02 | 738d | 2025-03-17 | 2026-09-08 | 258d |  |  |  | 16520h | 1602h |
| 26 | 1.6.1 | ✔Firma Acta Inicio Obra | milestone | 0d | 2025-03-17 A | 2025-03-17 A | 20, 19 | 100% |  | 2025-03-18 | 2025-03-18 |  | 2025-03-17 | 2025-03-17 |  |  |  | Julian Steib |  |  |
| 27 | 1.6.2 | Contratado - Vivienda Julieta Santiago |  | 18emo | 2025-03-17 | 2026-09-08 | 26 |  |  | 2025-03-18 | 2027-03-08 | 24emo | 2025-03-17 | 2026-09-08 | 1383d |  |  | Alexandra Arevalo | 12960h |  |
| 28 | 1.6.3 | Obra Vivienda - Julieta Santiago |  | 445d | 2025-03-18 A | 2026-11-30 |  | 45% | 244.75d |  |  |  |  |  | -217d | 0d |  | Alexandra Arevalo | 3560h | 1602h |
| 29 | 1.7 | **Obra Cronograma Alex** |  | 437d? | 2025-03-18 A | 2026-12-18 | 26 | 60% | 175.6d? |  |  |  | 2025-03-18 | 2026-12-14 | -13d | 0d |  |  | 25808h | 15316h |
| 30 | 1.7.1 | Período de lluvia y No laborable |  | 11d | 2026-11-16 | 2026-11-30 |  |  |  |  |  |  |  |  | 0d |  | must finish on 2026-11-30 | Alexandra Arevalo | 88h |  |
| 31 | 1.7.2 | **Pozos romanos** |  | 0d | 2025-05-20 A | 2025-05-20 A |  | 100% |  |  |  |  | 2025-05-20 | 2025-05-20 |  |  |  |  |  |  |
| 32 | 1.7.2.1 | ✔P1 - PEF - 80 diametro (49) | milestone | 0d | 2025-05-20 A | 2025-05-20 A |  | 100% |  |  |  |  | 2025-05-20 | 2025-05-20 |  |  | start no earlier than 2025-05-20 | Alexandra Arevalo |  |  |
| 33 | 1.7.2.2 | ✔P1 - PEF - 60 diametro (20) | milestone | 0d | 2025-05-20 A | 2025-05-20 A |  | 100% |  |  |  |  | 2025-05-20 | 2025-05-20 |  |  | start no earlier than 2025-05-20 | Alexandra Arevalo |  |  |
| 34 | 1.7.2.3 | ✔Cabezal 1 (80*120*120) 3 unidades | milestone | 0d | 2025-05-20 A | 2025-05-20 A |  | 100% |  |  |  |  | 2025-05-20 | 2025-05-20 |  |  | start no earlier than 2025-05-20 | Alexandra Arevalo |  |  |
| 35 | 1.7.2.4 | ✔Cabezal 2 (80*50*160) 9 unidades | milestone | 0d | 2025-05-20 A | 2025-05-20 A |  | 100% |  |  |  |  | 2025-05-20 | 2025-05-20 |  |  | start no earlier than 2025-05-20 | Alexandra Arevalo |  |  |
| 36 | 1.7.3 | **Vigas de fundación** |  | 42d | 2025-05-20 A | 2025-07-18 A |  | 100% |  |  |  |  | 2025-05-20 | 2025-07-18 |  |  |  |  | 2016h | 2016h |
| 37 | 1.7.3.1 | ✔VF - 0,18 * 0,30 |  | 42d | 2025-05-20 A | 2025-07-18 A | 33 | 100% |  |  |  |  | 2025-05-20 | 2025-07-18 |  |  |  | Alexandra Arevalo | 336h | 336h |
| 38 | 1.7.3.2 | ✔VF1 - 0,30 * 0,30 |  | 42d | 2025-05-20 A | 2025-07-18 A | 33 | 100% |  |  |  |  | 2025-05-20 | 2025-07-18 |  |  |  | Alexandra Arevalo | 336h | 336h |
| 39 | 1.7.3.3 | ✔VF - 0,40 * 0,30 |  | 42d | 2025-05-20 A | 2025-07-18 A | 33 | 100% |  |  |  |  | 2025-05-20 | 2025-07-18 |  |  |  | Alexandra Arevalo | 336h | 336h |
| 40 | 1.7.3.4 | ✔VF - 0,30 * 0,50 |  | 42d | 2025-05-20 A | 2025-07-18 A | 33 | 100% |  |  |  |  | 2025-05-20 | 2025-07-18 |  |  |  | Alexandra Arevalo | 336h | 336h |
| 41 | 1.7.3.5 | ✔VF - 0,40 * 0,50 |  | 42d | 2025-05-20 A | 2025-07-18 A | 33 | 100% |  |  |  |  | 2025-05-20 | 2025-07-18 |  |  |  | Alexandra Arevalo | 336h | 336h |
| 42 | 1.7.3.6 | ✔VF - 0,40 * 0,80 |  | 42d | 2025-05-20 A | 2025-07-18 A | 33 | 100% |  |  |  |  | 2025-05-20 | 2025-07-18 |  |  |  | Alexandra Arevalo | 336h | 336h |
| 43 | 1.7.4 | ✔Demora por envio de hierros |  | 10d | 2025-03-18 A | 2025-04-03 A |  | 100% |  |  |  |  | 2025-03-18 | 2025-04-03 |  |  |  | Alexandra Arevalo | 80h | 80h |
| 44 | 1.7.5 | ✔Mamposteria de Nivelación PSS |  | 1d | 2025-07-21 A | 2025-07-21 A | 42 | 100% |  |  |  |  | 2025-07-21 | 2025-07-21 |  |  |  | Alexandra Arevalo | 8h | 8h |
| 45 | 1.7.6 | **Columnas H°A°** |  | 195d | 2025-08-29 A | 2026-06-11 A |  | 100% |  |  |  |  | 2025-03-18 | 2026-02-24 |  |  |  |  | 3592h | 3592h |
| 46 | 1.7.6.1 | ✔C1 |  | 5d | 2025-08-29 A | 2025-09-04 A | 73 | 100% |  |  |  |  | 2025-08-29 | 2025-09-04 |  |  |  | Alexandra Arevalo | 40h | 40h |
| 47 | 1.7.6.2 | ✔C2 |  | 5d | 2025-08-29 A | 2025-09-04 A | 73 | 100% |  |  |  |  | 2025-08-29 | 2025-09-04 |  |  |  | Alexandra Arevalo | 40h | 40h |
| 48 | 1.7.6.3 | ✔C3 |  | 5d | 2025-08-29 A | 2025-09-04 A | 73 | 100% |  |  |  |  | 2025-08-29 | 2025-09-04 |  |  |  | Alexandra Arevalo | 40h | 40h |
| 49 | 1.7.6.4 | ✔C4 |  | 5d | 2025-08-29 A | 2025-09-04 A | 73 | 100% |  |  |  |  | 2025-08-29 | 2025-09-04 |  |  |  | Alexandra Arevalo | 40h | 40h |
| 50 | 1.7.6.5 | ✔C5 |  | 5d | 2025-08-29 A | 2025-09-04 A | 73 | 100% |  |  |  |  | 2025-08-29 | 2025-09-04 |  |  |  | Alexandra Arevalo | 40h | 40h |
| 51 | 1.7.6.6 | ✔C6 |  | 5d | 2025-08-29 A | 2025-09-04 A | 73 | 100% |  |  |  |  | 2025-08-29 | 2025-09-04 |  |  |  | Alexandra Arevalo | 40h | 40h |
| 52 | 1.7.6.7 | ✔C7 |  | 5d | 2025-08-29 A | 2025-09-04 A | 73 | 100% |  |  |  |  | 2025-08-29 | 2025-09-04 |  |  |  | Alexandra Arevalo | 40h | 40h |
| 53 | 1.7.6.8 | ✔C8 |  | 5d | 2025-08-29 A | 2025-09-04 A | 73 | 100% |  |  |  |  | 2025-08-29 | 2025-09-04 |  |  |  | Alexandra Arevalo | 40h | 40h |
| 54 | 1.7.6.9 | ✔C8* |  | 5d | 2025-08-29 A | 2025-09-04 A | 73 | 100% |  |  |  |  | 2025-08-29 | 2025-09-04 |  |  |  | Alexandra Arevalo | 40h | 40h |
| 55 | 1.7.6.10 | ✔C9 |  | 5d | 2025-08-29 A | 2025-09-04 A | 73 | 100% |  |  |  |  | 2025-08-29 | 2025-09-04 |  |  |  | Alexandra Arevalo | 40h | 40h |
| 56 | 1.7.6.11 | ✔C9* |  | 5d | 2025-08-29 A | 2025-09-04 A | 73 | 100% |  |  |  |  | 2025-08-29 | 2025-09-04 |  |  |  | Alexandra Arevalo | 40h | 40h |
| 57 | 1.7.6.12 | ✔C10 |  | 5d | 2025-08-29 A | 2025-09-04 A | 73 | 100% |  |  |  |  | 2025-08-29 | 2025-09-04 |  |  |  | Alexandra Arevalo | 40h | 40h |
| 58 | 1.7.6.13 | ✔C11 |  | 5d | 2025-08-29 A | 2025-09-04 A | 73 | 100% |  |  |  |  | 2025-08-29 | 2025-09-04 |  |  |  | Alexandra Arevalo | 40h | 40h |
| 59 | 1.7.6.14 | ✔C1 |  | 34d | 2026-01-29 A | 2026-03-18 A | 102 | 100% |  |  |  |  | 2026-01-29 | 2026-02-24 |  |  |  | Alexandra Arevalo | 272h | 272h |
| 60 | 1.7.6.15 | ✔C2 |  | 34d | 2026-01-29 A | 2026-03-18 A | 102 | 100% |  |  |  |  | 2026-01-29 | 2026-02-24 |  |  |  | Alexandra Arevalo | 272h | 272h |
| 61 | 1.7.6.16 | ✔C3 |  | 34d | 2026-01-29 A | 2026-03-18 A | 102 | 100% |  |  |  |  | 2026-01-29 | 2026-02-24 |  |  |  | Alexandra Arevalo | 272h | 272h |
| 62 | 1.7.6.17 | ✔C4 |  | 34d | 2026-01-29 A | 2026-03-18 A | 102 | 100% |  |  |  |  | 2026-01-29 | 2026-02-24 |  |  |  | Alexandra Arevalo | 272h | 272h |
| 63 | 1.7.6.18 | ✔C5 |  | 34d | 2026-01-29 A | 2026-03-18 A | 102 | 100% |  |  |  |  | 2026-01-29 | 2026-02-24 |  |  |  | Alexandra Arevalo | 272h | 272h |
| 64 | 1.7.6.19 | ✔C6 |  | 34d | 2026-01-29 A | 2026-03-18 A | 102 | 100% |  |  |  |  | 2026-01-29 | 2026-02-24 |  |  |  | Alexandra Arevalo | 272h | 272h |
| 65 | 1.7.6.20 | ✔C7 |  | 34d | 2026-01-29 A | 2026-03-18 A | 102 | 100% |  |  |  |  | 2026-01-29 | 2026-02-24 |  |  |  | Alexandra Arevalo | 272h | 272h |
| 66 | 1.7.6.21 | ✔C8 |  | 34d | 2026-01-29 A | 2026-03-18 A | 102 | 100% |  |  |  |  | 2026-01-29 | 2026-02-24 |  |  |  | Alexandra Arevalo | 272h | 272h |
| 67 | 1.7.6.22 | ✔C9 |  | 34d | 2026-01-29 A | 2026-03-18 A | 102 | 100% |  |  |  |  | 2026-01-29 | 2026-02-24 |  |  |  | Alexandra Arevalo | 272h | 272h |
| 68 | 1.7.6.23 | ✔C10 |  | 34d | 2026-01-29 A | 2026-03-18 A | 102 | 100% |  |  |  |  | 2026-01-29 | 2026-02-24 |  |  |  | Alexandra Arevalo | 272h | 272h |
| 69 | 1.7.6.24 | ✔C11 |  | 34d | 2026-01-29 A | 2026-03-18 A | 102 | 100% |  |  |  |  | 2026-01-29 | 2026-02-24 |  |  |  | Alexandra Arevalo | 272h | 272h |
| 70 | 1.7.6.25 | ✔C1 |  | 5d | 2026-06-05 A | 2026-06-11 A | 98 | 100% |  |  |  |  | 2025-03-18 | 2025-03-25 |  |  |  | Alexandra Arevalo | 40h | 40h |
| 71 | 1.7.6.26 | ✔C2 |  | 5d | 2026-06-05 A | 2026-06-11 A | 98 | 100% |  |  |  |  | 2025-03-18 | 2025-03-25 |  |  |  | Alexandra Arevalo | 40h | 40h |

Notes:
- 43: Se compro con un proveedor que demoro el envio

| ID | WBS | Task | Duration | Start | Finish | Predecessors | Complete | Remaining | Baseline 1 start | Baseline 1 finish | Total slack | Free slack | Constraint | Resources | Work | Actual work |
| --- | --- | --- | --- | --- | --- | --- | --- | --- | --- | --- | --- | --- | --- | --- | --- | --- |
| 72 | 1.7.7 | **Tabique de hormigon visto** | 245d | 2025-07-22 A | 2026-07-15 |  | 90% | 24.31d | 2025-07-22 | 2026-05-19 | -74d | 0d |  |  | 1048h | 944h |
| 73 | 1.7.7.1 | ✔Th - Tabiques de Hormigon de Contención PF - esp: 18cm (parte 1) | 34d | 2025-07-22 A | 2025-09-08 A | 44 | 100% |  | 2025-07-22 | 2025-09-08 |  |  |  | Alexandra Arevalo | 272h | 272h |
| 74 | 1.7.7.2 | ✔Th - Tabiques de Hormigon de Contención PF - esp: 18cm (parte 2) | 36d | 2025-09-16 A | 2025-11-05 A | 75 | 100% |  | 2025-09-16 | 2025-11-05 |  |  |  | Alexandra Arevalo | 288h | 288h |
| 75 | 1.7.7.3 | ✔Demora por hormigon | 5d | 2025-09-09 A | 2025-09-15 A | 73 | 100% |  | 2025-09-09 | 2025-09-15 |  |  |  | Alexandra Arevalo | 40h | 40h |
| 76 | 1.7.7.4 | ✔T1 - Tabiques de Hormigon Visto PB - esp: 18cm | 43d | 2026-01-26 A | 2026-03-27 A | 88 | 100% |  | 2026-01-26 | 2026-03-27 |  |  |  | Alexandra Arevalo | 344h | 344h |
| 77 | 1.7.7.5 | T1 - Tabiques de Hormigon Visto PA - esp: 18cm | 13d | 2026-06-26 | 2026-07-15 | 89 |  |  | 2026-05-06 | 2026-05-19 | -129d | 0d |  | Alexandra Arevalo | 104h |  |
| 78 | 1.7.8 | **Encadenados horizontales** | 97d | 2026-02-24 A | 2026-07-15 |  | 36% | 62.36d | 2025-07-22 | 2026-05-27 | -92d | 0d |  |  | 112h | 40h |
| 79 | 1.7.8.1 | ✔Ve (0,18x0,25) PB | 5d | 2026-02-24 A | 2026-03-02 A | 96FF | 100% |  | 2025-07-22 | 2025-07-28 |  |  |  | Alexandra Arevalo | 40h | 40h |
| 80 | 1.7.8.2 | Ve2 (0,18x0,21) PA | 9d | 2026-07-02 | 2026-07-15 | 77FF |  |  | 2026-05-20 | 2026-05-27 | -122d | 0d |  | Alexandra Arevalo | 72h |  |
| 81 | 1.7.9 | **Vigas estructurales** | 52d | 2026-04-28 A | 2026-07-13 |  | 84% | 8.32d |  |  | -34d | 0d |  |  | 400h | 336h |
| 82 | 1.7.9.1 | ✔V1 - 0,18 x 1,00 | 18d | 2026-04-28 A | 2026-05-22 A | 89FF-23d | 100% |  | 2025-07-22 | 2025-07-31 |  |  |  | Alexandra Arevalo | 144h | 144h |
| 83 | 1.7.9.2 | ✔V2 - 0,18 x 0,60 | 8d | 2026-05-13 A | 2026-05-22 A | 89FF-23d | 100% |  | 2025-07-22 | 2025-07-31 |  |  |  | Alexandra Arevalo | 64h | 64h |
| 84 | 1.7.9.3 | ✔V3 - 0,18 x 0,30 | 8d | 2026-05-13 A | 2026-05-22 A | 89FF-23d | 100% |  | 2025-07-22 | 2025-07-31 |  |  |  | Alexandra Arevalo | 64h | 64h |
| 85 | 1.7.9.4 | ✔V4 - 0,18 x 2,00 | 8d | 2026-05-13 A | 2026-05-22 A | 89FF-23d | 100% |  | 2025-07-22 | 2025-07-31 |  |  |  | Alexandra Arevalo | 64h | 64h |
| 86 | 1.7.9.5 | V5 - 0,18 x 0,40 | 8d | 2026-07-01 | 2026-07-13 | 98FS-10d |  |  | 2026-03-13 | 2026-03-17 | -125d | 0d |  | Alexandra Arevalo | 64h |  |
| 87 | 1.7.10 | **Losas** | 160d | 2025-11-03 A | 2026-06-25 A |  | 100% |  | 2025-11-03 | 2026-05-05 |  |  |  |  | 936h | 936h |
| 88 | 1.7.10.1 | ✔Losa Viguetas 22cm - Planta Subsuelo | 56d | 2025-11-03 A | 2026-01-23 A |  | 100% |  | 2025-11-03 | 2026-01-23 |  |  | start no earlier than 2025-11-03 | Alexandra Arevalo | 448h | 448h |
| 89 | 1.7.10.2 | ✔Losa Maciza VISTA - 15cm - Planta Baja | 61d | 2026-03-30 A | 2026-06-25 A | 76 | 100% |  | 2026-03-30 | 2026-05-05 |  |  |  | Alexandra Arevalo | 488h | 488h |
| 90 | 1.7.11 | **Mampostería** | 195d | 2025-10-01 A | 2026-07-15 |  | 79% | 40.89d | 2025-09-09 | 2026-05-19 | -92d | 0d |  |  | 992h | 784h |
| 91 | 1.7.11.1 | ✔Mamposteria Ladrillo Hueco Portante 12x18x33 (PBNF) | 10d | 2025-11-06 A | 2025-11-20 A | 74 | 100% |  | 2025-09-09 | 2025-09-22 |  |  |  | Alexandra Arevalo | 80h | 80h |
| 92 | 1.7.11.2 | ✔ Mamposteria Ladrillo Hueco Portante 12x18x33 (ajuste de obra) | 10d | 2025-11-06 A | 2025-11-20 A | 74 | 100% |  | 2025-09-09 | 2025-09-22 |  |  |  | Alexandra Arevalo | 80h | 80h |
| 93 | 1.7.11.3 | ✔Mamposteria Ladrillo Hueco Portante 18x18x33 (PBNF) | 10d | 2025-11-06 A | 2025-11-20 A | 74 | 100% |  | 2025-09-09 | 2025-09-22 |  |  |  | Alexandra Arevalo | 80h | 80h |
| 94 | 1.7.11.4 | ✔Mamposteria Ladrillo Hueco Portante 12x18x33 (PB) | 18d | 2026-01-29 A | 2026-02-24 A | 102 | 100% |  | 2026-01-29 | 2026-02-24 |  |  |  | Alexandra Arevalo | 144h | 144h |
| 95 | 1.7.11.5 | ✔Mamposteria Ladrillo Hueco Portante 12x18x33 (ajuste de obra ) | 18d | 2026-01-29 A | 2026-02-24 A | 102 | 100% |  | 2026-01-29 | 2026-02-24 |  |  |  | Alexandra Arevalo | 144h | 144h |
| 96 | 1.7.11.6 | ✔Mamposteria Ladrillo Hueco Portante 18x18x33 (PB) | 22d | 2026-01-29 A | 2026-03-02 A | 102 | 100% |  | 2026-01-29 | 2026-03-02 |  |  |  | Alexandra Arevalo | 176h | 176h |
| 97 | 1.7.11.7 | Mamposteria Ladrillo Hueco Portante 12x18x33 (PA) | 13d | 2026-06-26 | 2026-07-15 | 89 |  |  | 2026-05-06 | 2026-05-19 | -230d | 0d |  | Alexandra Arevalo | 104h |  |
| 98 | 1.7.11.8 | Mamposteria Ladrillo Hueco Portante 18x18x33 (PA) | 13d | 2026-06-26 | 2026-07-15 | 89 |  |  | 2026-05-06 | 2026-05-19 | -172d | 0d |  | Alexandra Arevalo | 104h |  |
| 99 | 1.7.11.9 | ✔Mamposteria Ladrillon 18 de rafa | 10d | 2025-10-01 A | 2025-10-15 A |  | 100% |  | 2025-10-01 | 2025-10-15 |  |  | start no earlier than 2025-10-01 | Alexandra Arevalo | 80h | 80h |

Notes:
- 75: Holcim y Hormiblock se negaron a tirar en MOLVENTO

| ID | WBS | Task | Duration | Start | Finish | Predecessors | Complete | Remaining | Baseline 1 start | Baseline 1 finish | Total slack | Free slack | Resources | Work | Actual work |
| --- | --- | --- | --- | --- | --- | --- | --- | --- | --- | --- | --- | --- | --- | --- | --- |
| 100 | 1.7.12 | **Aislación en muros** | 195d | 2025-10-22 A | 2026-08-04 |  | 41% | 114.71d | 2025-10-22 | 2026-01-28 | -128d | 0d |  | 136h | 56h |
| 101 | 1.7.12.1 | ✔Capa Aisladora Vertical | 2d | 2025-10-22 A | 2025-10-28 A | 118 | 100% |  | 2025-10-22 | 2025-10-28 |  |  | Alexandra Arevalo | 16h | 16h |
| 102 | 1.7.12.2 | ✔Capa Aisladora Horizontal PB | 5d | 2026-01-22 A | 2026-01-28 A | 76 | 100% |  | 2026-01-22 | 2026-01-28 |  |  | Alexandra Arevalo | 40h | 40h |
| 103 | 1.7.12.3 | Impermeabilización Membrana geotextil | 5d | 2026-07-29 | 2026-08-04 | 249 |  |  |  |  | -136d | 0d | Alexandra Arevalo | 40h |  |
| 104 | 1.7.12.4 | Ladrillon Rafa | 5d | 2026-07-29 | 2026-08-04 | 249 |  |  |  |  | -136d | 0d | Alexandra Arevalo | 40h |  |
| 105 | 1.7.13 | **Contrapiso** | 55d | 2025-11-04 A | 2026-01-23 A |  | 100% |  | 2025-11-04 | 2026-01-23 |  |  |  | 200h | 200h |
| 106 | 1.7.13.1 | ✔Hormigón p/contrapiso Interior e=10cm | 10d | 2025-11-04 A | 2025-11-17 A | 101FS+4d | 100% |  | 2025-11-04 | 2025-11-17 |  |  | Alexandra Arevalo | 80h | 80h |
| 107 | 1.7.13.2 | ✔Hormigón p/contrapiso Exterior e=10cm | 5d | 2026-01-19 A | 2026-01-23 A | 108FF, 109FF | 100% |  | 2026-01-19 | 2026-01-23 |  |  | Alexandra Arevalo | 40h | 40h |
| 108 | 1.7.13.3 | ✔Hormigón p/contrapiso Interior e=10cm | 5d | 2026-01-19 A | 2026-01-23 A | 88FS-5d | 100% |  | 2026-01-19 | 2026-01-23 |  |  | Alexandra Arevalo | 40h | 40h |
| 109 | 1.7.13.4 | ✔Hormigón p/contrapiso Interior e=10cm - PB (ajuste de obra) | 5d | 2026-01-19 A | 2026-01-23 A | 88FS-5d | 100% |  | 2026-01-19 | 2026-01-23 |  |  | Alexandra Arevalo | 40h | 40h |
| 110 | 1.7.14 | **Carpeta de nivelación** | 75d | 2026-04-29 | 2026-08-14 |  |  |  | 2026-07-28 | 2026-08-12 | -211d | 0d |  | 624h |  |
| 111 | 1.7.14.1 | Hormigón alivianado - Relleno PB Y PA | 66d | 2026-04-29 | 2026-07-29 | 179FS-28d |  |  |  |  | -211d | 0d | Alexandra Arevalo | 528h |  |
| 112 | 1.7.14.2 | Carpeta de Nivelación Interior esp. 4cm PB. | 12d | 2026-07-30 | 2026-08-14 | 111 |  |  | 2026-07-28 | 2026-08-12 | -210d | 0d | Alexandra Arevalo | 96h |  |
| 113 | 1.7.15 | **Cubierta** | 21d | 2026-06-19 A | 2026-07-20 |  | 43% | 12d | 2026-05-06 | 2026-06-16 | -12d | 0d |  | 168h | 72h |
| 114 | 1.7.15.1 | ✔Hormigón pendiente (carga) | 4d | 2026-06-19 A | 2026-06-24 A | 89FS-5d | 100% |  | 2026-05-06 | 2026-05-14 |  |  | Alexandra Arevalo | 32h | 32h |
| 115 | 1.7.15.2 | ✔Carpeta sobre carga | 5d | 2026-06-25 A | 2026-07-01 A | 114 | 100% |  | 2026-05-15 | 2026-05-29 |  |  | Alexandra Arevalo | 40h | 40h |
| 116 | 1.7.15.3 | Impermeabilización* | 12d | 2026-07-02 | 2026-07-20 | 115 |  |  | 2026-06-01 | 2026-06-16 | -125d | 0d | Alexandra Arevalo | 96h |  |
| 117 | 1.7.16 | **Revoques y terminaciones de muros** | 228d | 2025-10-03 A | 2026-09-03 |  | 73% | 62.18d | 2025-03-18 | 2026-07-23 | -108d | 0d |  | 1504h | 904h |
| 118 | 1.7.16.1 | ✔Revoque exterior c/ azotado hidrof. cementicio en mamp. PF | 15d | 2025-10-03 A | 2025-10-24 A | 91, 92 | 100% |  | 2025-10-03 | 2025-10-24 |  |  | Alexandra Arevalo | 120h | 120h |
| 119 | 1.7.16.2 | ✔Revoque exterior c/ azotado hidrof. cementicio en mamp. PB | 87d | 2025-11-21 A | 2026-03-30 A | 92 | 100% |  | 2025-03-18 | 2025-05-02 |  |  |  |  |  |
| 120 | 1.7.16.3 | Revoque exterior c/ azotado hidrof. Cementicio en mamp. PA | 15d | 2026-07-08 | 2026-07-29 | 97FS-5d |  |  | 2025-10-03 | 2025-10-24 | -132d | 0d | Alexandra Arevalo | 120h |  |
| 121 | 1.7.16.4 | ✔Revoque Grueso Interior esp.1,5cm PB | 49d | 2026-01-19 A | 2026-03-30 A | 94FS-26d, 95FS-26d | 100% |  | 2026-01-19 | 2026-02-16 |  |  | Alexandra Arevalo | 392h | 392h |
| 122 | 1.7.16.5 | ✔Revoque Grueso Interior esp.1,5cm PB | 49d | 2026-01-19 A | 2026-03-30 A | 94FS-26d, 95FS-26d | 100% |  | 2026-01-19 | 2026-02-16 |  |  | Alexandra Arevalo | 392h | 392h |
| 123 | 1.7.16.6 | Revoque Grueso Interior esp.1,5cm PA | 8d | 2026-07-08 | 2026-07-20 | 97FS-5d |  |  | 2026-05-20 | 2026-06-10 | -230d | 0d | Alexandra Arevalo | 64h |  |
| 124 | 1.7.16.7 | Colocación de premarcos | 10d | 2026-07-03 | 2026-07-17 | 123FS-11d |  |  | 2026-06-11 | 2026-06-24 | -230d | 0d | Alexandra Arevalo | 80h |  |
| 125 | 1.7.16.8 | Revoques finos | 15d | 2026-08-06 | 2026-08-27 | 152 |  |  | 2026-07-02 | 2026-07-23 | -172d | 0d | Alexandra Arevalo | 120h |  |
| 126 | 1.7.16.9 | Enlucido de Yeso PB | 20d | 2026-08-06 | 2026-09-03 | 152 |  |  | 2025-10-03 | 2026-07-15 | -157d | 0d | Alexandra Arevalo | 160h |  |
| 127 | 1.7.16.10 | Enlucido de Yeso PA | 7d | 2026-08-06 | 2026-08-14 | 152 |  |  | 2025-10-03 | 2026-06-25 | -144d | 0d | Alexandra Arevalo | 56h |  |

Notes:
- 108: ASI ES COMO REALMENTE SE VA A HACER, POR ESO NO COINCIDE CON EL CERTIFICADO
- 109: ASI ES COMO REALMENTE SE VA A HACER, POR ESO NO COINCIDE CON EL CERTIFICADO

| ID | WBS | Task | Duration | Start | Finish | Predecessors | Complete | Remaining | Baseline 1 start | Baseline 1 finish | Total slack | Free slack | Constraint | Resources | Work | Actual work |
| --- | --- | --- | --- | --- | --- | --- | --- | --- | --- | --- | --- | --- | --- | --- | --- | --- |
| 128 | 1.7.17 | **Cielorrasos** | 53d | 2026-06-26 | 2026-09-10 |  |  |  | 2026-02-17 | 2026-07-30 | -162d | 0d |  |  | 592h |  |
| 129 | 1.7.17.1 | C2- Cieloraso aplicado con terminacion de yeso | 7d | 2026-07-07 | 2026-07-16 | 130 |  |  | 2026-02-26 | 2026-03-06 | -123d | 0d |  | Alexandra Arevalo | 56h |  |
| 130 | 1.7.17.2 | Revoque Grueso en cielorraso Interior esp.1,5cm | 7d | 2026-06-26 | 2026-07-06 | 121, 89, 122 |  |  | 2026-02-17 | 2026-02-25 | -123d | 0d |  | Alexandra Arevalo | 56h |  |
| 131 | 1.7.17.3 | C4- Cielorraso suspendido anti humedad, con buña perimetral | 15d | 2026-07-27 | 2026-08-14 | 153 |  |  | 2026-06-25 | 2026-07-16 | -144d | 0d |  | Alexandra Arevalo | 120h |  |
| 132 | 1.7.17.4 | C5- Cielorraso suspendido con buña perimetral | 15d | 2026-07-27 | 2026-08-14 | 153 |  |  | 2026-06-25 | 2026-07-16 | -144d | 0d |  | Alexandra Arevalo | 120h |  |
| 133 | 1.7.17.5 | Cielorraso de Madera (en donde esta la cubierta metalica) | 33d | 2026-07-27 | 2026-09-10 | 153 |  |  |  |  | -162d | 0d |  |  |  |  |
| 134 | 1.7.17.6 | C4- Cielorraso suspendido anti humedad, con buña perimetral | 15d | 2026-08-06 | 2026-08-27 | 154 |  |  | 2026-07-10 | 2026-07-30 | -152d | 0d |  | Alexandra Arevalo | 120h |  |
| 135 | 1.7.17.7 | C5- Cielorraso suspendido con buña perimetral | 15d | 2026-08-06 | 2026-08-27 | 154 |  |  | 2026-07-10 | 2026-07-30 | -152d | 0d |  | Alexandra Arevalo | 120h |  |
| 136 | 1.7.18 | **Escaleras** | 10d | 2026-07-20 | 2026-07-31 |  |  |  | 2026-03-30 | 2026-04-13 | -134d | 0d |  |  | 80h |  |
| 137 | 1.7.18.1 | Escaleras de Circulación Interior H° PB a PA | 10d | 2026-07-20 | 2026-07-31 | 76, 89FS+15d |  |  | 2026-03-30 | 2026-04-13 | -134d | 0d |  | Alexandra Arevalo | 80h |  |
| 138 | 1.7.19 | **Asador** | 3d | 2026-07-29 | 2026-07-31 |  |  |  | 2026-02-26 | 2026-03-02 | -134d | 0d |  |  | 24h |  |
| 139 | 1.7.19.1 | Asador | 3d | 2026-07-29 | 2026-07-31 | 137FF |  |  | 2026-02-26 | 2026-03-02 | -134d | 0d |  | Alexandra Arevalo | 24h |  |
| 140 | 1.7.20 | **Veredas perimetrales** | 2d | 2026-07-29 | 2026-07-30 |  |  |  | 2025-03-18 | 2025-03-18 | -133d | 0d |  |  | 16h |  |
| 141 | 1.7.20.1 | Veredas Perimetrales con Cordon - Ancho 40cm | 2d | 2026-07-29 | 2026-07-30 | 249 |  |  | 2025-03-18 | 2025-03-18 | -133d | 0d | start no earlier than 2026-04-15 | Alexandra Arevalo | 16h |  |
| 142 | 1.7.21 | **HERRERIA** | 144d | 2026-01-19 A | 2026-08-14 |  | 27% | 104.97d | 2025-03-18 | 2026-07-08 | -39d | 0d |  |  | 856h | 232h |
| 143 | 1.7.21.1 | ✔CM01 - 2UPN180 (2 columnas) 3,00 mts de largo c/una. | 5d | 2026-01-19 A | 2026-01-23 A | 88FF | 100% |  | 2026-03-30 | 2026-04-06 |  |  |  | Alexandra Arevalo | 40h | 40h |
| 144 | 1.7.21.2 | ✔CM01 - 2UPN180 (2 columnas) 2,20 mts de largo c/una. SUBSUELO | 5d | 2026-01-19 A | 2026-01-23 A | 143FF | 100% |  |  |  |  |  |  | Alexandra Arevalo | 40h | 40h |
| 145 | 1.7.21.3 | ✔CM - 2UPN100 (2 columnas) 3,00 mts de largo c una. | 5d | 2026-03-06 A | 2026-03-12 A | 144FS+28d | 100% |  | 2026-03-30 | 2026-04-06 |  |  |  | Alexandra Arevalo | 40h | 40h |
| 146 | 1.7.21.4 | VM1 - PW460 | 7d | 2026-06-11 A | 2026-06-19 A | 76, 89FS-11d | 100% |  | 2026-03-30 | 2026-04-08 |  |  |  | Alexandra Arevalo | 56h | 56h |
| 147 | 1.7.21.5 | VM2 - PW360 | 7d | 2026-06-11 A | 2026-06-19 A | 76, 89FS-11d | 100% |  | 2026-03-30 | 2026-04-08 |  |  |  | Alexandra Arevalo | 56h | 56h |
| 148 | 1.7.21.6 | VM3 - PW250 | 7d | 2026-07-16 | 2026-07-24 | 77 |  |  | 2026-05-20 | 2026-05-29 | -129d | 0d |  | Alexandra Arevalo | 56h |  |
| 149 | 1.7.21.7 | VM1 - PW460 | 5d | 2026-07-14 | 2026-07-20 | 86 |  |  |  |  | -125d | 0d |  | Alexandra Arevalo | 40h |  |
| 150 | 1.7.21.8 | VM2 - PW360 | 5d | 2026-07-14 | 2026-07-20 | 86 |  |  |  |  | -125d | 0d |  | Alexandra Arevalo | 40h |  |
| 151 | 1.7.21.9 | Estructura con correas y chapa. pendi.:15% - Cantidad 2 | 24d | 2026-06-22 | 2026-07-24 | 147 |  |  | 2026-05-06 | 2026-06-10 | -174d | 0d |  | Alexandra Arevalo | 192h |  |
| 152 | 1.7.21.10 | Estructura con correas y chapa. Pendi.:15% | 15d | 2026-07-16 | 2026-08-05 | 98 |  |  | 2026-06-11 | 2026-07-01 | -172d | 0d |  | Alexandra Arevalo | 120h |  |
| 153 | 1.7.21.11 | Subestructura para cieloraso. | 10d | 2026-07-13 | 2026-07-24 | 151FF |  |  | 2026-06-11 | 2026-06-24 | -174d | 0d |  | Alexandra Arevalo | 80h |  |
| 154 | 1.7.21.12 | Subestructura para cieloraso. | 5d | 2026-07-30 | 2026-08-05 | 152FF |  |  | 2026-07-02 | 2026-07-08 | -162d | 0d |  | Alexandra Arevalo | 40h |  |

Notes:
- 129: A definir
- 130: A definir
- 131: A definir
- 132: A definir

| ID | WBS | Task | Type | Duration | Start | Finish | Predecessors | Complete | Remaining | Baseline 1 start | Baseline 1 finish | Total slack | Free slack | Constraint | Resources | Work | Actual work |
| --- | --- | --- | --- | --- | --- | --- | --- | --- | --- | --- | --- | --- | --- | --- | --- | --- | --- |
| 155 | 1.7.21.13 | **Pérgola** | inactive | 1d? | 2026-07-29 | 2026-07-29 |  |  |  | 2025-03-18 | 2025-03-18 | -132d | 0d |  |  | 8h |  |
| 156 | 1.7.21.13.1 | Listones de madera de 2¨ | inactive | 1d? | 2026-07-29 | 2026-07-29 | 249 |  |  | 2025-03-18 | 2025-03-18 | -132d | 0d | start no earlier than 2026-06-01 | Alexandra Arevalo | 8h |  |
| 157 | 1.7.21.14 | **Conductos Metálicos** |  | 38d | 2026-06-23 | 2026-08-14 |  |  |  | 2026-03-03 | 2026-03-11 | -144d | 0d |  |  | 56h |  |
| 158 | 1.7.21.14.1 | Asador PB - conducto descarga 2,30m - 30 diam. |  | 3d | 2026-06-23 | 2026-06-25 | 89FF |  |  | 2026-03-03 | 2026-03-05 | -144d | 0d |  | Alexandra Arevalo | 24h |  |
| 159 | 1.7.21.14.2 | Hogar Exterior PB - conducto descarga 2,30m - 30 diametro. |  | 2d | 2026-06-24 | 2026-06-25 | 158FF |  |  | 2026-03-06 | 2026-03-09 | -144d | 0d |  | Alexandra Arevalo | 16h |  |
| 160 | 1.7.21.14.3 | Calefactor Tromen - conducto descarga 4,60 - 30 diametro. |  | 2d | 2026-08-13 | 2026-08-14 | 159FS+33d |  |  | 2026-03-10 | 2026-03-11 | -144d | 0d |  | Alexandra Arevalo | 16h |  |
| 161 | 1.7.22 | **INSTALACIONES** |  | 278d? | 2025-11-03 A | 2026-12-15 |  | 73% | 75.93d? | 2025-03-18 | 2026-12-14 | -88d | 0d |  |  | 4672h | 3396h |
| 162 | 1.7.22.1 | **Instalaciones Pluviales** |  | 144d | 2026-01-12 A | 2026-08-07 |  | 90% | 14.4d | 2026-01-12 | 2026-01-23 | 0d |  |  |  | 760h | 684h |
| 163 | 1.7.22.1.1 | Desagues pluviales (sin zinguería) |  | 95d | 2026-01-12 A | 2026-08-07 | 108FF, 109FF, 152FF | 90% | 9.5d | 2026-01-12 | 2026-01-23 | -139d | 0d |  | Alexandra Arevalo | 760h | 684h |
| 164 | 1.7.22.2 | **Instalaciones Cloacales** |  | 275d | 2025-11-03 A | 2026-12-10 |  | 90% | 27.13d | 2025-11-03 | 2026-12-01 | -115d | 0d |  |  | 1784h | 1608h |
| 165 | 1.7.22.2.1 | ✔Instalación de cloacas para tres baños en PB , pileta de cocina, pileta de lavadero, pileta de asador, lavarropas, lava vajillas. |  | 35d | 2025-11-03 A | 2025-12-19 A |  | 100% |  | 2025-11-03 | 2025-12-19 |  |  | start no earlier than 2025-11-03 | Alexandra Arevalo | 280h | 280h |
| 166 | 1.7.22.2.2 | Instalación de cañeria principal exterior - Hasta cámara impulsión |  | 5d | 2026-07-29 | 2026-08-04 | 249 |  |  |  |  | -136d | 0d | start no earlier than 2026-07-15 | Alexandra Arevalo | 40h |  |
| 167 | 1.7.22.2.3 | ✔Instalación de cloacas para un baño en PA |  | 50d | 2026-04-15 A | 2026-06-25 A | 89FF | 100% |  | 2026-05-06 | 2026-07-16 |  |  |  | Alexandra Arevalo | 400h | 400h |
| 168 | 1.7.22.2.4 | Colocación de cámara impulsión (según detalle técnico) |  | 10d | 2026-07-29 | 2026-08-11 | 167, 249 |  |  | 2026-07-17 | 2026-07-30 | -141d | 0d |  | Alexandra Arevalo | 80h |  |
| 169 | 1.7.22.2.5 | ✔Desagote de 5 aire acondicionado |  | 116d | 2025-11-27 A | 2026-05-18 A |  | 100% |  | 2026-05-06 | 2026-09-25 |  |  | start no earlier than 2025-11-27 | Alexandra Arevalo | 928h | 928h |
| 170 | 1.7.22.2.6 | Colocación de artefactos |  | 7d | 2026-12-01 | 2026-12-10 | 240 |  |  | 2026-11-23 | 2026-12-01 | -224d | 0d |  | Alexandra Arevalo | 56h |  |
| 171 | 1.7.22.3 | **Instalaciones de Agua** |  | 222d | 2026-01-21 A | 2026-12-10 |  | 75% | 56.51d | 2025-03-18 | 2026-12-01 | -85d | 0d |  |  | 1320h | 984h |
| 172 | 1.7.22.3.1 | ✔Instalación de Agua para tres baños en PB , pileta de cocina, pileta de lavadero, pileta de asador, lavarropas, lava vajillas. |  | 93d | 2026-01-21 A | 2026-05-29 A |  | 100% |  | 2026-01-21 | 2026-02-03 |  |  | start no earlier than 2026-01-21 | Alexandra Arevalo | 744h | 744h |
| 173 | 1.7.22.3.2 | Instalación de Agua para un baño en PA |  | 15d | 2026-07-21 | 2026-08-10 | 123 |  |  | 2026-05-20 | 2026-07-30 | -140d | 0d |  | Alexandra Arevalo | 120h |  |
| 174 | 1.7.22.3.3 | Alimentación de agua para válvulas de inodoros desde tanques |  | 15d | 2026-07-21 | 2026-08-10 | 123 |  |  | 2026-05-20 | 2026-07-30 | -140d | 0d |  | Alexandra Arevalo | 120h |  |
| 175 | 1.7.22.3.4 | ✔Alimentación de agua a tanques y canillas en patio |  | 30d | 2026-06-26 A | 2026-08-07 A | 249FS-22d | 100% |  | 2025-03-18 | 2025-03-25 |  |  |  | Alexandra Arevalo | 240h | 240h |
| 176 | 1.7.22.3.5 | Instalación de bomba hidroneumática bajo tanque |  | 5d | 2026-12-03 | 2026-12-10 | 177FF |  |  | 2026-11-25 | 2026-12-01 | -224d | 0d |  | Alexandra Arevalo | 40h |  |
| 177 | 1.7.22.3.6 | Colocación de artefactos |  | 7d | 2026-12-01 | 2026-12-10 | 240 |  |  | 2026-11-23 | 2026-12-01 | -224d | 0d |  | Alexandra Arevalo | 56h |  |
| 178 | 1.7.22.4 | **Instalaciones de Gas** |  | 140d | 2026-05-27 A | 2026-12-15 |  | 20% | 111.43d | 2025-03-18 | 2026-12-14 | -130d | 0d |  |  | 392h | 80h |
| 179 | 1.7.22.4.1 | ✔Instalación de gas para anafe, horno en asador, 2 calderas, termotanque. |  | 10d | 2026-05-27 A | 2026-06-09 A | 121, 122, 89FS-22d | 100% |  | 2026-02-17 | 2026-03-16 |  |  |  | Alexandra Arevalo | 80h | 80h |
| 180 | 1.7.22.4.2 | Factibilidad de gas y plano aprobación de cañerías. |  | 27d | 2026-06-10 | 2026-07-17 | 179 |  |  | 2026-03-17 | 2026-03-26 | -124d | 0d |  | Alexandra Arevalo | 216h |  |
| 181 | 1.7.22.4.3 | Segunda inspección parcial de cañerías y ventilaciones. | milestone | 0d | 2026-07-17 | 2026-07-17 | 180 |  |  | 2025-03-18 | 2025-03-18 | -124d | 0d |  | Alexandra Arevalo |  |  |
| 182 | 1.7.22.4.4 | Solicitud de servicio domiciliario (no incluye aranceles Ecogas). |  | 2d | 2026-12-14 | 2026-12-15 | 183 |  |  | 2026-12-03 | 2026-12-14 | -227d | 0d |  | Alexandra Arevalo | 16h |  |
| 183 | 1.7.22.4.5 | Final de gas con artefactos colocados. |  | 3d | 2026-12-09 | 2026-12-11 | 185 |  |  | 2026-11-30 | 2026-12-02 | -227d | 0d |  | Alexandra Arevalo | 24h |  |
| 184 | 1.7.22.4.6 | Ventilaciones para gas. Conductos y rejillas. |  | 2d | 2026-12-01 | 2026-12-02 | 240 |  |  | 2026-11-23 | 2026-11-24 | -219d | 0d |  | Alexandra Arevalo | 16h |  |
| 185 | 1.7.22.4.7 | Colocación de artefactos |  | 5d | 2026-12-01 | 2026-12-07 | 240 |  |  | 2026-11-23 | 2026-11-27 | -227d | 0d |  | Alexandra Arevalo | 40h |  |

Notes:
- 166: Adicional
- 167: REVISAR DIVISION PB DE PA
- 168: A revisar
- 173: REVISAR DIVISION PB DE PA
- 175: AGREGAR TAREA TANQUE, NO APARECE
- 181: Detallar fecha 2da inspeccion
- 182: se redujo de 7 a 2 dias para que la obra cierre en noviembre por pedido de gabi. Revisar con alex de acortar realmente tareas

| ID | WBS | Task | Duration | Start | Finish | Predecessors | Complete | Remaining | Baseline 1 start | Baseline 1 finish | Total slack | Free slack | Resources | Work | Actual work |
| --- | --- | --- | --- | --- | --- | --- | --- | --- | --- | --- | --- | --- | --- | --- | --- |
| 186 | 1.7.22.5 | **Instalaciones de Aire Acondicionado** | 145d? | 2026-05-19 A | 2026-12-15 |  | 19% | 118.15d? | 2026-09-28 | 2026-12-04 | -140d | 0d |  | 216h | 40h |
| 187 | 1.7.22.5.1 | AA Living Comedor - 3500frig | 5d | 2026-12-09 | 2026-12-15 | 185 |  |  | 2026-11-30 | 2026-12-04 | -227d | 0d | Alexandra Arevalo | 40h |  |
| 188 | 1.7.22.5.2 | AA Suite - 2500frig | 5d | 2026-12-09 | 2026-12-15 | 185 |  |  | 2026-11-30 | 2026-12-04 | -227d | 0d | Alexandra Arevalo | 40h |  |
| 189 | 1.7.22.5.3 | AA DORMITORIO 2 - PA - 2500frig | 5d | 2026-12-09 | 2026-12-15 | 185 |  |  | 2026-11-30 | 2026-12-04 | -227d | 0d | Alexandra Arevalo | 40h |  |
| 190 | 1.7.22.5.4 | AA Dormitorio 3 - PA - 2500frig | 5d | 2026-12-09 | 2026-12-15 | 185 |  |  | 2026-11-30 | 2026-12-04 | -227d | 0d | Alexandra Arevalo | 40h |  |
| 191 | 1.7.22.5.5 | Kit Instalacion AA | 5d | 2026-05-19 A | 2026-05-26 A | 169 | 100% |  | 2026-09-28 | 2026-10-02 |  |  | Alexandra Arevalo | 40h | 40h |
| 192 | 1.7.22.5.6 | Equipos de AA - Dormitorios PB + PA | 1d? | 2026-12-09 | 2026-12-09 | 185 |  |  | 2026-11-30 | 2026-11-30 | -223d | 0d | Alexandra Arevalo | 8h |  |
| 193 | 1.7.22.5.7 | Equipos de AA - Cocina-Comedor | 1d? | 2026-12-09 | 2026-12-09 | 185 |  |  | 2026-11-30 | 2026-11-30 | -223d | 0d | Alexandra Arevalo | 8h |  |
| 194 | 1.7.22.6 | **Instalación de Calefacción** | 15d | 2026-07-30 | 2026-08-20 |  |  |  | 2026-07-02 | 2026-08-03 | -147d | 0d |  | 200h |  |
| 195 | 1.7.22.6.1 | Colector | 5d | 2026-07-30 | 2026-08-05 | 111 |  |  | 2026-07-28 | 2026-08-03 | -137d | 0d | Alexandra Arevalo | 40h |  |
| 196 | 1.7.22.6.2 | Piso Radiante Planta Baja | 10d | 2026-08-06 | 2026-08-20 | 152, 111 |  |  | 2026-07-02 | 2026-07-16 | -147d | 0d | Alexandra Arevalo | 80h |  |
| 197 | 1.7.22.6.3 | Piso Radiante Planta Alta | 10d | 2026-07-30 | 2026-08-12 | 111 |  |  | 2026-07-17 | 2026-07-27 | -142d | 0d | Alexandra Arevalo | 80h |  |
| 198 | 1.7.23 | **INSTALACIONES ELECTRICAS** | 309d | 2025-09-23 A | 2026-12-18 |  | 65% | 107.07d | 2025-09-23 | 2026-12-02 | -111d | 0d |  | 2632h | 1720h |
| 199 | 1.7.23.1 | ✔Canalización de cañerias y bocas en losa. | 81d | 2026-02-27 A | 2026-06-25 A | 89FF | 100% |  | 2026-04-29 | 2026-05-05 |  |  | Alexandra Arevalo | 648h | 648h |
| 200 | 1.7.23.2 | ✔Canalización de cañerias en Tabiques. | 110d | 2025-10-17 A | 2026-03-27 A | 73SS+61d | 100% |  | 2025-09-23 | 2026-03-17 |  |  | Alexandra Arevalo | 880h | 880h |
| 201 | 1.7.23.3 | Canalizacion en muros y amurados de cajas. | 120d | 2025-09-23 A | 2026-07-10 | 91, 92, 89FF+10d | 20% | 96d | 2025-09-23 | 2026-03-17 | -215d | 0d | Alexandra Arevalo | 960h | 192h |
| 202 | 1.7.23.4 | Cableado General 220V | 10d | 2026-12-01 | 2026-12-15 | 240 |  |  | 2026-11-06 | 2026-11-27 | -230d | 0d | Alexandra Arevalo | 80h |  |
| 203 | 1.7.23.5 | Armado de Tomas y Puntos de Encendido. | 5d | 2026-11-09 | 2026-11-13 | 232 |  |  | 2026-10-16 | 2026-10-22 | -207d | 0d | Alexandra Arevalo | 40h |  |
| 204 | 1.7.23.6 | Armado de Tablero en General. | 3d | 2026-12-16 | 2026-12-18 | 202 |  |  | 2026-11-30 | 2026-12-02 | -230d | 0d | Alexandra Arevalo | 24h |  |
| 205 | 1.7.24 | **PISOS Y REVESTIMIENTOS** | 120d | 2026-06-08 | 2026-11-26 |  |  |  | 2026-03-18 | 2026-11-16 | -215d | 0d |  | 4168h |  |
| 206 | 1.7.24.1 | **Pisos Interiores** | 28d | 2026-07-27 | 2026-09-03 |  |  |  | 2026-08-13 | 2026-09-10 | -174d | 0d |  | 960h |  |
| 207 | 1.7.24.1.1 | Cocina - Living - Comedor - Porcelanato 60x120 | 20d | 2026-07-27 | 2026-08-24 | 153 |  |  | 2026-08-13 | 2026-09-10 | -174d | 0d | Alexandra Arevalo | 160h |  |
| 208 | 1.7.24.1.2 | Galeria Quincho - Porcelanato 60x120 | 20d | 2026-07-27 | 2026-08-24 | 153 |  |  | 2026-08-13 | 2026-09-10 | -154d | 0d | Alexandra Arevalo | 160h |  |
| 209 | 1.7.24.1.3 | Baños - Lavadero - Despensa - Pasillos - Porcelanatos 60x60 | 20d | 2026-07-27 | 2026-08-24 | 153 |  |  | 2026-08-13 | 2026-09-10 | -154d | 0d | Alexandra Arevalo | 160h |  |
| 210 | 1.7.24.1.4 | Dormitorios - Porcelanato 60x120 | 20d | 2026-07-27 | 2026-08-24 | 153 |  |  | 2026-08-13 | 2026-09-10 | -149d | 0d | Alexandra Arevalo | 160h |  |
| 211 | 1.7.24.1.5 | Baño - Porcelanatos 60x60 | 20d | 2026-08-06 | 2026-09-03 | 154 |  |  | 2026-08-13 | 2026-09-10 | -162d | 0d | Alexandra Arevalo | 160h |  |
| 212 | 1.7.24.1.6 | Dormitorio - Porcelanato 60x120 | 20d | 2026-08-06 | 2026-09-03 | 154 |  |  | 2026-08-13 | 2026-09-10 | -162d | 0d | Alexandra Arevalo | 160h |  |

| ID | WBS | Task | Duration | Start | Finish | Predecessors | Baseline 1 start | Baseline 1 finish | Total slack | Free slack | Resources | Work |
| --- | --- | --- | --- | --- | --- | --- | --- | --- | --- | --- | --- | --- |
| 213 | 1.7.24.2 | **Pisos Exteriores** | 20d | 2026-08-25 | 2026-09-21 |  | 2026-09-11 | 2026-10-08 | -174d | 0d |  | 480h |
| 214 | 1.7.24.2.1 | Ingreso Cochera- Adoquines | 20d | 2026-08-25 | 2026-09-21 | 207, 249 | 2026-09-11 | 2026-10-08 | -174d | 0d | Alexandra Arevalo | 160h |
| 215 | 1.7.24.2.2 | Cochera - Sala de Maquinas - Deposito - (falta definir revestimiento) | 20d | 2026-08-25 | 2026-09-21 | 207, 249 | 2026-09-11 | 2026-10-08 | -169d | 0d | Alexandra Arevalo | 160h |
| 216 | 1.7.24.2.3 | Ingreso Peatonal (falta definir revestimiento) | 20d | 2026-08-25 | 2026-09-21 | 207, 249 | 2026-09-11 | 2026-10-08 | -169d | 0d | Alexandra Arevalo | 160h |
| 217 | 1.7.24.3 | **Zocalos** | 25d | 2026-08-25 | 2026-09-28 |  | 2026-09-11 | 2026-10-16 | -174d | 0d |  | 280h |
| 218 | 1.7.24.3.1 | Zocalos: Cochera | 5d | 2026-09-22 | 2026-09-28 | 214 | 2026-10-09 | 2026-10-16 | -174d | 0d | Alexandra Arevalo | 40h |
| 219 | 1.7.24.3.2 | Zocalos: Galería | 5d | 2026-08-25 | 2026-08-31 | 208 | 2026-09-11 | 2026-09-17 | -154d | 0d | Alexandra Arevalo | 40h |
| 220 | 1.7.24.3.3 | Zocalos: Cocina-Living-Comedor | 5d | 2026-08-25 | 2026-08-31 | 207 | 2026-09-11 | 2026-09-17 | -154d | 0d | Alexandra Arevalo | 40h |
| 221 | 1.7.24.3.4 | Zocalos: Lavadero-Despensa-Baños-Pasillo | 5d | 2026-08-25 | 2026-08-31 | 209 | 2026-09-11 | 2026-09-17 | -154d | 0d | Alexandra Arevalo | 40h |
| 222 | 1.7.24.3.5 | Zocalos: Dormitorio | 5d | 2026-09-04 | 2026-09-10 | 212 | 2026-09-11 | 2026-09-17 | -162d | 0d | Alexandra Arevalo | 40h |
| 223 | 1.7.24.3.6 | Zocalos: Baños | 5d | 2026-09-04 | 2026-09-10 | 211 | 2026-09-11 | 2026-09-17 | -162d | 0d | Alexandra Arevalo | 40h |
| 224 | 1.7.24.3.7 | Zocalos: Dormitorio | 5d | 2026-09-04 | 2026-09-10 | 212 | 2026-09-11 | 2026-09-17 | -162d | 0d | Alexandra Arevalo | 40h |
| 225 | 1.7.24.4 | **Revestimientos Exteriores** | 120d | 2026-06-08 | 2026-11-26 |  | 2026-03-18 | 2026-11-16 | -215d | 0d |  | 2448h |
| 226 | 1.7.24.4.1 | Rev. De Piedra a Definir - Exterior. | 120d | 2026-06-08 | 2026-11-26 | 201FS-24d | 2026-03-18 | 2026-04-30 | -215d | 0d | Alexandra Arevalo | 960h |
| 227 | 1.7.24.4.2 | Rev. De Piedra a Definir - Interior. | 120d | 2026-06-08 | 2026-11-26 | 201FS-24d | 2026-03-18 | 2026-04-30 | -215d | 0d | Alexandra Arevalo | 960h |
| 228 | 1.7.24.4.3 | Porcellanato Modelo a Definir. | 66d | 2026-08-17 | 2026-11-19 | 112, 249 | 2026-08-13 | 2026-11-16 | -210d | 0d | Alexandra Arevalo | 528h |
| 229 | 1.7.25 | **PINTURA** | 65d | 2026-08-06 | 2026-11-06 |  | 2026-07-02 | 2026-10-15 | -202d | 0d |  | 760h |
| 230 | 1.7.25.1 | **Pintura Interior** | 20d | 2026-10-09 | 2026-11-06 |  | 2026-09-17 | 2026-10-15 | -207d | 0d |  | 480h |
| 231 | 1.7.25.1.1 | Latex Interior PB | 20d | 2026-10-09 | 2026-11-06 | 240FF-15d | 2026-09-17 | 2026-10-15 | -206d | 0d | Alexandra Arevalo | 160h |
| 232 | 1.7.25.1.2 | Latex Interior PA | 20d | 2026-10-09 | 2026-11-06 | 240FF-15d | 2026-09-17 | 2026-10-15 | -207d | 0d | Alexandra Arevalo | 160h |
| 233 | 1.7.25.1.3 | Latex Cieloraso | 20d | 2026-10-09 | 2026-11-06 | 240FF-15d | 2026-09-17 | 2026-10-15 | -202d | 0d | Alexandra Arevalo | 160h |
| 234 | 1.7.25.2 | **Pintura Exterior** | 35d | 2026-08-06 | 2026-09-24 |  | 2026-07-02 | 2026-08-21 | -172d | 0d |  | 280h |
| 235 | 1.7.25.2.1 | Revestimiento Plastico | 20d | 2026-08-28 | 2026-09-24 | 125 | 2026-07-24 | 2026-08-21 | -172d | 0d | Alexandra Arevalo | 160h |
| 236 | 1.7.25.2.2 | Esmalte Sintetico | 15d | 2026-08-06 | 2026-08-27 | 152 | 2026-07-02 | 2026-07-23 | -152d | 0d | Alexandra Arevalo | 120h |

Notes:
- 228: A revisar

| ID | WBS | Task | Type | Duration | Start | Finish | Predecessors | Baseline start | Baseline finish | Baseline duration | Baseline 1 start | Baseline 1 finish | Total slack | Free slack | Constraint | Deadline | Resources | Work |
| --- | --- | --- | --- | --- | --- | --- | --- | --- | --- | --- | --- | --- | --- | --- | --- | --- | --- | --- |
| 237 | 1.7.26 | **CARPINTERIAS** |  | 15d | 2026-11-09 | 2026-11-30 |  |  |  |  | 2026-10-16 | 2026-11-05 | -218d | 0d |  |  |  | 88h |
| 238 | 1.7.26.1 | Puertas de madera |  | 4d | 2026-11-09 | 2026-11-12 | 231 |  |  |  | 2026-10-16 | 2026-10-21 | -206d | 0d |  |  | Alexandra Arevalo | 32h |
| 239 | 1.7.26.2 | Puertas de aluminio |  | 4d | 2026-11-09 | 2026-11-12 | 231 |  |  |  | 2026-10-16 | 2026-10-21 | -206d | 0d |  |  | Alexandra Arevalo | 32h |
| 240 | 1.7.26.3 | Aberturas de aluminio* |  | 3d | 2026-11-26 | 2026-11-30 | 124FS+90d |  |  |  | 2026-11-03 | 2026-11-05 | -230d | 0d |  |  | Alexandra Arevalo | 24h |
| 241 | 1.7.27 | **VARIOS** |  | 1d? | 2026-11-30 | 2026-11-30 |  |  |  |  | 2025-03-18 | 2025-03-18 | -217d | 0d |  |  |  | 16h |
| 242 | 1.7.27.1 | **Pileta** |  | 1d? | 2026-11-30 | 2026-11-30 |  |  |  |  | 2025-03-18 | 2025-03-18 | -217d | 0d |  |  |  | 8h |
| 243 | 1.7.27.1.1 | Piscina con desborde infinito* |  | 1d? | 2026-11-30 | 2026-11-30 | 28FF |  |  |  | 2025-03-18 | 2025-03-18 | -217d | 0d |  |  | Alexandra Arevalo | 8h |
| 244 | 1.7.27.2 | **Pozo de agua** |  | 1d? | 2026-11-30 | 2026-11-30 |  |  |  |  | 2025-03-18 | 2025-03-18 | -217d | 0d |  |  |  | 8h |
| 245 | 1.7.27.2.1 | Pozo de agua para riego |  | 1d? | 2026-11-30 | 2026-11-30 | 28FF |  |  |  | 2025-03-18 | 2025-03-18 | -217d | 0d |  |  | Alexandra Arevalo | 8h |
| 246 | 1.8 | Fin Obra | milestone | 0d | 2026-12-18 | 2026-12-18 | 29 | 2027-03-08 | 2027-03-08 |  | 2026-12-14 | 2026-12-14 | -8d | 0d |  | 2026-12-07 | Alexandra Arevalo |  |
| 247 | 1.9 | Postventa Pasiva |  | 12emo | 2026-12-18 | 2027-12-13 | 29 | 2027-03-09 | 2027-04-07 | 0.24emo | 2026-12-14 | 2027-12-09 | -1008d | 0d |  |  | Posventa | 8640h |
| 248 | 1.10 | Fin Postventa | milestone | 0d | 2027-12-13 | 2027-12-13 | 247 | 2027-04-07 | 2027-04-07 |  | 2027-12-09 | 2027-12-09 | -231d | 0d |  | 2027-01-11 | Posventa |  |
| 249 | 1.11 | Definición Proyecto de Paisajismo |  | 100d | 2026-03-04 | 2026-07-28 |  |  |  |  |  |  | -197d | 0d | start no earlier than 2026-03-04 |  |  |  |
| 250 | 1.12 | Firma Acta recepción Provisoria | milestone | 0d | 2026-12-18 | 2026-12-18 | 29 | 2027-03-08 | 2027-03-08 |  | 2026-12-14 | 2026-12-14 | 0d |  |  |  | Gabriela Rojo |  |
| 251 | 1.13 | Firma Acta recepcion Definitiva | milestone | 0d | 2027-12-13 | 2027-12-13 | 250FS+12emo | 2028-03-02 | 2028-03-02 |  | 2027-12-09 | 2027-12-09 | 0d |  |  |  | Gabriela Rojo |  |
